# Cronograma - Sanear Bahia 2013

Schedule from MS Project, 2013-08-01 to 2014-09-12, status date 2013-06-06.
Microsoft

## Calendars

- Sanear Bahia 2013: Mon-Fri 09:00-12:00, 13:00-18:00; Sat-Sun off. Exceptions (off unless hours are given): 2013-09-07 (Independência do Brasil), 2013-10-12 (Padroeira do Brasil), 2013-11-02 (Finados), 2013-11-15 (Proclamação da República), 2013-12-25 (Natal), 2014-01-01 (Confraternização Universal), 2014-03-04 (Carnaval), 2014-04-18 (Paixão de Cristo), 2014-04-21 (Tiradentes), 2014-05-01 (Dia do Trabalho), 2014-06-19 (Corpus Christi), 2014-06-24 (São João).

## Resources

| Resource |
| --- |
| CREA |
| FUNASA |
| COORD. ADM |
| COORD. TEC. |
| CONSULTORES |
| INSTRUTORES |
| COMITÊS |
| TÉC. GEST. SANEAM. |
| SOCIEDADE |
| M. PÚBLICO |
| GOV. ESTADUAL |
| PARLAMENTARES |
| PREFEITOS |
| VEREADORES |
| LIDERANÇAS |

## Schedule

| ID | WBS | Task | Type | Duration | Start | Finish | Predecessors | Total slack | Free slack | Resources | Work |
| --- | --- | --- | --- | --- | --- | --- | --- | --- | --- | --- | --- |
| 1 | 1 | **PROGRAMA SANEAR BAHIA 2013** |  | 283d | 2013-08-01 | 2014-09-12 |  | 0d |  |  | 52664h |
| 2 | 1.1 | Início do programa | milestone, manual | 0d | 2013-08-01 | 2013-08-01 |  |  |  |  |  |
| 3 | 1.2 | **INICIAÇÃO** |  | 20d | 2013-08-01 | 2013-08-28 |  | 0d |  |  | 320h |
| 4 | 1.2.1 | **Kickoff Meeting do Projeto** |  | 10d | 2013-08-01 | 2013-08-14 |  | 0d |  |  | 160h |
| 5 | 1.2.1.1 | Definição dos objetivos, metas, missão, visão, premissas e restrições, principais estratégias e organização do trabalho do programa | manual | 10d | 2013-08-01 | 2013-08-14 | 2 |  |  | CREA; FUNASA | 160h |
| 6 | 1.2.2 | **Definição do Grupo de Trabalho de Coordenação** |  | 10d | 2013-08-15 | 2013-08-28 |  | 0d |  |  | 160h |
| 7 | 1.2.2.1 | Composição da coordenação do GTC | manual | 5d | 2013-08-15 | 2013-08-21 | 5 |  |  | COORD. ADM; CREA | 80h |
| 8 | 1.2.2.2 | Elaboração de Organograma de Coordenação | manual | 2d | 2013-08-22 | 2013-08-23 | 7 |  |  | COORD. ADM; CREA | 32h |
| 9 | 1.2.2.3 | Elaboração de Matriz de Responsabilidades da Coordenação | manual | 3d | 2013-08-26 | 2013-08-28 | 8 |  |  | COORD. ADM; CREA | 48h |
| 10 | 1.3 | **PLANEJAMENTO** |  | 20d | 2013-08-01 | 2013-08-28 |  | 0d |  |  | 6080h |
| 11 | 1.3.1 | **Planejamento da Comunicação no Projeto** |  | 10d | 2013-08-01 | 2013-08-14 |  | 0d |  |  | 640h |
| 12 | 1.3.1.1 | Definição dos eventos de comunicação |  | 10d | 2013-08-01 | 2013-08-14 | 2 | 273d | 0d | COORD. TEC.; CREA | 160h |
| 13 | 1.3.1.2 | Definição das reuniões, calendário e participantes | manual | 10d | 2013-08-01 | 2013-08-14 | 12SS |  |  | COORD. TEC.; CREA | 160h |
| 14 | 1.3.1.3 | Definição relatórios e periodicidade | manual | 10d | 2013-08-01 | 2013-08-14 | 12SS |  |  | COORD. TEC.; CREA | 160h |
| 15 | 1.3.1.4 | Elaboração do plano de comunicação do projeto | manual | 10d | 2013-08-01 | 2013-08-14 | 12SS |  |  | COORD. TEC.; CREA | 160h |
| 16 | 1.3.2 | **Planejamento de Custos do Projeto** |  | 10d | 2013-08-01 | 2013-08-14 |  | 0d |  |  | 640h |
| 17 | 1.3.2.1 | Levantamento dos recursos necessários | manual | 10d | 2013-08-01 | 2013-08-14 | 2 |  |  | COORD. TEC.; CREA | 160h |
| 18 | 1.3.2.2 | Estimativa de custos | manual | 10d | 2013-08-01 | 2013-08-14 | 17SS |  |  | COORD. TEC.; CREA | 160h |
| 19 | 1.3.2.3 | Orçamentação do projeto | manual | 10d | 2013-08-01 | 2013-08-14 | 17SS |  |  | COORD. TEC.; CREA | 160h |
| 20 | 1.3.2.4 | Elaboração do plano de custos (controle) | manual | 10d | 2013-08-01 | 2013-08-14 | 17SS |  |  | COORD. TEC.; CREA | 160h |
| 21 | 1.3.3 | **Planejamento de Recursos Humanos do Projeto** |  | 10d | 2013-08-01 | 2013-08-14 |  | 0d |  |  | 640h |
| 22 | 1.3.3.1 | Definição das equipes de trabalho | manual | 10d | 2013-08-01 | 2013-08-14 | 2 |  |  | COORD. TEC.; CREA | 160h |
| 23 | 1.3.3.2 | Recrutamento e seleção dos profissionais | manual | 10d | 2013-08-01 | 2013-08-14 | 22SS |  |  | COORD. TEC.; CREA | 160h |
| 24 | 1.3.3.3 | Elaboração dos organogramas das equipes de trabalho | manual | 10d | 2013-08-01 | 2013-08-14 | 22SS |  |  | COORD. TEC.; CREA | 160h |
| 25 | 1.3.3.4 | Elaboração de plano de RH do projeto | manual | 10d | 2013-08-01 | 2013-08-14 | 22SS |  |  | COORD. TEC.; CREA | 160h |

| ID | WBS | Task | Type | Duration | Start | Finish | Predecessors | Total slack | Resources | Work |
| --- | --- | --- | --- | --- | --- | --- | --- | --- | --- | --- |
| 26 | 1.3.4 | **Planejamento das Aquisições do Projeto** |  | 10d | 2013-08-01 | 2013-08-14 |  |  |  | 800h |
| 27 | 1.3.4.1 | Planejamento dos recursos necessários ao projeto | manual | 10d | 2013-08-01 | 2013-08-14 | 2 |  | COORD. TEC.; CREA | 160h |
| 28 | 1.3.4.2 | Estratégia e logística de atendimento às necessidades do projeto | manual | 10d | 2013-08-01 | 2013-08-14 | 27SS |  | COORD. TEC.; CREA | 160h |
| 29 | 1.3.4.3 | Definição das contratações de serviços | manual | 10d | 2013-08-01 | 2013-08-14 | 27SS |  | COORD. TEC.; CREA | 160h |
| 30 | 1.3.4.4 | Definição das compras de materiais e equipamentos | manual | 10d | 2013-08-01 | 2013-08-14 | 27SS |  | COORD. TEC.; CREA | 160h |
| 31 | 1.3.4.5 | Elaboração do plano de aquisições do projeto | manual | 10d | 2013-08-01 | 2013-08-14 | 27SS |  | COORD. TEC.; CREA | 160h |
| 32 | 1.3.5 | **Planejamento da Integração do Projeto** |  | 10d | 2013-08-01 | 2013-08-14 |  |  |  | 800h |
| 33 | 1.3.5.1 | Elaboração da EAP do Gerenciamento | manual | 10d | 2013-08-01 | 2013-08-14 | 2 |  | COORD. TEC.; CREA | 160h |
| 34 | 1.3.5.2 | Elaboração do Plano de Trabalho Gerencial |  | 10d | 2013-08-01 | 2013-08-14 | 33SS | 0d | COORD. TEC.; CREA | 160h |
| 35 | 1.3.5.3 | Definição da sistemática de acompanhamento e controle | manual | 10d | 2013-08-01 | 2013-08-14 | 33SS |  | COORD. TEC.; CREA | 160h |
| 36 | 1.3.5.4 | Elaboração de curvas de avanço físico | manual | 10d | 2013-08-01 | 2013-08-14 | 33SS |  | COORD. TEC.; CREA | 160h |
| 37 | 1.3.5.5 | Elaboração do dashboard de acompanhamento e controle | manual | 10d | 2013-08-01 | 2013-08-14 | 33SS |  | COORD. TEC.; CREA | 160h |
| 38 | 1.3.6 | **Planejamento do Escopo do Projeto** |  | 10d | 2013-08-15 | 2013-08-28 |  | 0d |  | 640h |
| 39 | 1.3.6.1 | Definição da lista de escopo | manual | 10d | 2013-08-15 | 2013-08-28 | 2SS+10d |  | COORD. TEC.; CREA | 160h |
| 40 | 1.3.6.2 | Definição dos marcos e entregas |  | 10d | 2013-08-15 | 2013-08-28 | 39SS | 263d | COORD. TEC.; CREA | 160h |
| 41 | 1.3.6.3 | Elaboração da EAP de execução do projeto |  | 10d | 2013-08-15 | 2013-08-28 | 39SS | 263d | COORD. TEC.; CREA | 160h |
| 42 | 1.3.6.4 | Elaboração do plano de escopo do projeto |  | 10d | 2013-08-15 | 2013-08-28 | 39SS | 263d | COORD. TEC.; CREA | 160h |
| 43 | 1.3.7 | **Planejamento de Tempo do Projeto** |  | 10d | 2013-08-15 | 2013-08-28 |  |  |  | 800h |
| 44 | 1.3.7.1 | Definição do método e estratégia de execução do projeto |  | 10d | 2013-08-15 | 2013-08-28 | 2SS+10d | 0d | COORD. TEC.; CREA | 160h |
| 45 | 1.3.7.2 | Detalhamento das atividades do projeto |  | 10d | 2013-08-15 | 2013-08-28 | 44SS | 0d | COORD. TEC.; CREA | 160h |
| 46 | 1.3.7.3 | Sequenciamento das atividades |  | 10d | 2013-08-15 | 2013-08-28 | 44SS | 0d | COORD. TEC.; CREA | 160h |
| 47 | 1.3.7.4 | Estimativa de duração das atividades |  | 10d | 2013-08-15 | 2013-08-28 | 44SS | 0d | COORD. TEC.; CREA | 160h |
| 48 | 1.3.7.5 | Elaboração do cronograma executivo do projeto | manual | 10d | 2013-08-15 | 2013-08-28 | 44SS |  | COORD. TEC.; CREA | 160h |
| 49 | 1.3.8 | **Planejamento da Qualidade do Projeto** |  | 10d | 2013-08-15 | 2013-08-28 |  |  |  | 480h |
| 50 | 1.3.8.1 | Planejamento da qualidade do projeto | manual | 10d | 2013-08-15 | 2013-08-28 | 2SS+10d |  | COORD. TEC.; CREA | 160h |
| 51 | 1.3.8.2 | Definição de objetivos, metas e indicadores | manual | 10d | 2013-08-15 | 2013-08-28 | 50SS |  | COORD. TEC.; CREA | 160h |
| 52 | 1.3.8.3 | Elaboração do plano de qualidade do projeto | manual | 10d | 2013-08-15 | 2013-08-28 | 50SS |  | COORD. TEC.; CREA | 160h |

| ID | WBS | Task | Type | Duration | Start | Finish | Predecessors | Total slack | Resources | Work |
| --- | --- | --- | --- | --- | --- | --- | --- | --- | --- | --- |
| 53 | 1.3.9 | **Planejamento de Riscos do Projeto** |  | 10d | 2013-08-15 | 2013-08-28 |  |  |  | 640h |
| 54 | 1.3.9.1 | Levantamento e identificação dos riscos do projeto | manual | 10d | 2013-08-15 | 2013-08-28 | 2SS+10d |  | COORD. TEC.; CREA | 160h |
| 55 | 1.3.9.2 | Elaboração do mapa de riscos do projeto | manual | 10d | 2013-08-15 | 2013-08-28 | 54SS |  | COORD. TEC.; CREA | 160h |
| 56 | 1.3.9.3 | Análise quantitativa dos riscos | manual | 10d | 2013-08-15 | 2013-08-28 | 54SS |  | COORD. TEC.; CREA | 160h |
| 57 | 1.3.9.4 | Elaboração do plano de resposta aos riscos do projeto | manual | 10d | 2013-08-15 | 2013-08-28 | 54SS |  | COORD. TEC.; CREA | 160h |
| 58 | 1.4 | **EXECUÇÃO** |  | 271d | 2013-08-01 | 2014-08-27 |  | 0d |  | 42224h |
| 59 | 1.4.1 | **Atividades Preliminares** |  | 251d | 2013-08-01 | 2014-07-30 |  | 0d |  | 13848h |
| 60 | 1.4.1.1 | Encontro de planejamento | manual | 20d | 2013-08-01 | 2013-08-28 | 2 |  | CREA; FUNASA | 320h |
| 61 | 1.4.1.2 | Elaboração dos termos de referência | manual | 20d | 2013-08-01 | 2013-08-28 | 2 |  | CREA; FUNASA | 320h |
| 62 | 1.4.1.3 | Realização de procedimentos licitatórios | manual | 43d | 2013-08-15 | 2013-10-14 | 2SS+10d |  | CREA; FUNASA; INSTRUTORES | 1032h |
| 63 | 1.4.1.4 | Validaçao do credenciamento instrutores | manual | 43d | 2013-08-15 | 2013-10-14 | 2SS+10d |  | TÉC. GEST. SANEAM. | 344h |
| 64 | 1.4.1.5 | Elaboração e Produção dos materiais de divulgação | manual | 33d | 2013-08-15 | 2013-09-30 | 2SS+10d |  | CREA; FUNASA; INSTRUTORES | 792h |
| 65 | 1.4.1.6 | Elaboração e Produção dos materiais didáticos | manual | 24d | 2013-08-15 | 2013-09-17 | 2SS+10d |  | CREA; FUNASA; INSTRUTORES | 576h |
| 66 | 1.4.1.7 | Encontro de consolidação do material didático | manual | 24d | 2013-08-15 | 2013-09-17 | 2SS+10d |  | CREA; FUNASA; INSTRUTORES | 576h |
| 67 | 1.4.1.8 | Seleção dos municípios | manual | 33d | 2013-08-15 | 2013-09-30 | 2SS+10d |  | CREA; FUNASA | 528h |
| 68 | 1.4.1.9 | Divulgação das atividades | manual | 336ed | 2013-08-28 | 2014-07-30 | 2SS+20d |  | CREA | 8064h |
| 69 | 1.4.1.10 | Encontro de nivelamento dos instrutores | manual | 10d | 2013-10-01 | 2013-10-14 | 67 |  | CREA | 80h |
| 70 | 1.4.1.11 | Levantamento prévio das informações | manual | 76d | 2013-08-29 | 2013-12-13 | 2SS+20d |  | CREA; FUNASA | 1216h |
| 71 | 1.4.1.12 | Reuniões preparatórias com gestores municipais |  | 40d | 2013-09-26 | 2013-11-21 | 70SS+20d | 203d |  |  |
| 72 | 1.4.2 | **Atividades de Execução dos PMSB´s** |  | 219d | 2013-10-01 | 2014-08-14 |  | 0d |  | 19920h |
| 73 | 1.4.2.1 | **1ª Entrega: Produto A dos PMSB´s** |  | 50d | 2013-10-01 | 2013-12-10 |  | 0d |  | 3680h |
| 74 | 1.4.2.1.1 | Audiências públicas iniciais para apresentação da metodologia de trabalho do projeto e ato público de formação dos comitês | manual | 50d | 2013-10-01 | 2013-12-10 | 2FS+43d |  | COMITÊS; CREA; FUNASA; INSTRUTORES; M. PÚBLICO; SOCIEDADE | 2400h |
| 75 | 1.4.2.1.2 | Oficinas de capacitação das equipes dos municípios sobre elaboração de PMSB | manual | 40d | 2013-10-15 | 2013-12-10 | 74SS+10d |  | COMITÊS; COORD. TEC.; CREA; INSTRUTORES | 1280h |
| 76 | 1.4.2.2 | **2ª Entrega: Produto B dos PMSB´s** |  | 33d | 2013-10-15 | 2013-11-29 |  | 0d |  | 1584h |
| 77 | 1.4.2.2.1 | Oficinas de elaboração dos planos de mobilização social | manual | 33d | 2013-10-15 | 2013-11-29 | 75SS |  | COMITÊS; CREA; FUNASA; INSTRUTORES; M. PÚBLICO; SOCIEDADE | 1584h |

| ID | WBS | Task | Type | Duration | Start | Finish | Predecessors | Total slack | Free slack | Resources | Work |
| --- | --- | --- | --- | --- | --- | --- | --- | --- | --- | --- | --- |
| 78 | 1.4.2.3 | **3ª Entrega: Produto C dos PMSB´s** |  | 88d | 2013-10-28 | 2014-03-03 |  | 0d |  |  | 3928h |
| 79 | 1.4.2.3.1 | Acompanhamento da planejamento das reuniões setoriais para definição do diagnóstico | manual | 44d | 2013-10-28 | 2013-12-30 | 77SS+9d |  |  |  |  |
| 80 | 1.4.2.3.2 | Oficinas setoriais para elaboração dos diagnósticos - 1ª versão | manual | 44d | 2013-11-08 | 2014-01-13 | 79SS+9d |  |  | COMITÊS; CONSULTORES; COORD. TEC.; CREA | 1408h |
| 81 | 1.4.2.3.3 | Verificação de consistência dos diagnósticos pela equipe de consultores | manual | 45d | 2013-11-22 | 2014-01-27 | 80SS+9d |  |  | COORD. TEC.; CREA; FUNASA | 1080h |
| 82 | 1.4.2.3.4 | Discussão e validação dos diagnósticos com os comitês dos municípios - 2ª versão | manual | 45d | 2013-12-30 | 2014-03-03 | 81SS+25d |  |  | COMITÊS; CREA; INSTRUTORES; SOCIEDADE | 1440h |
| 83 | 1.4.2.4 | **4ª Entrega: Produto D dos PMSB´s** |  | 64d | 2014-01-28 | 2014-04-30 |  | 0d |  |  | 3424h |
| 84 | 1.4.2.4.1 | Oficinas Setoriais para Elaboração das Prospectivas e Planejamentos Estratégicos - 1a Versão | manual | 40d | 2014-01-28 | 2014-03-25 | 82SS+20d |  |  | COMITÊS; CONSULTORES; COORD. TEC.; CREA | 1280h |
| 85 | 1.4.2.4.2 | Acompanhamento do planejamento das reuniões setoriais para definição das Prospectivas e Planejamentos Estratégicos | manual | 40d | 2014-02-11 | 2014-04-08 | 84SS+10d |  |  |  |  |
| 86 | 1.4.2.4.3 | Verificação de consistência das Prospectivas e Planejamentos Estratégicos pela equipe de consultores | manual | 44d | 2014-02-25 | 2014-04-30 | 85SS+10d |  |  | COORD. TEC.; CREA; FUNASA | 1056h |
| 87 | 1.4.2.4.4 | Discussão e Validação das Prospectivas e Planejamentos Estratégicos no curto, médio e longo prazo, pela equipe de consultores - 2a Versão | manual | 34d | 2014-03-12 | 2014-04-30 | 86SS+10d |  |  | COMITÊS; CREA; INSTRUTORES; SOCIEDADE | 1088h |
| 88 | 1.4.2.5 | **5ª Entrega: Produtos E e F dos PMSB´s** |  | 63d | 2014-04-01 | 2014-07-03 |  | 0d |  |  | 3320h |
| 89 | 1.4.2.5.1 | Oficinas de Elaboração dos Relatórios dos Programas, Projetos e Ações e do Plano de Execução - 1ª versão | manual | 39d | 2014-04-01 | 2014-05-28 | 87SS+14d |  |  | COMITÊS; CONSULTORES; COORD. TEC.; CREA | 1248h |
| 90 | 1.4.2.5.2 | Acompanhamento do planejamento das reuniões setoriais para definição dos Programas, Projetos e Ações e do Plano de Execução |  | 40d | 2014-04-15 | 2014-06-12 | 89SS+10d | 64d | 0d |  |  |
| 91 | 1.4.2.5.3 | Verificação de consistência dos Relatórios dos Programas, Projetos e Ações e planos de execução pela equipe de consultores. | manual | 29d | 2014-05-02 | 2014-06-11 | 90SS+10d |  |  | COORD. TEC.; CREA; FUNASA | 696h |
| 92 | 1.4.2.5.4 | Discussão e Validação dos Relatórios dos Programas, Projetos e Ações e planos de execução com as equipes dos municípios - 2a Versão | manual | 43d | 2014-05-02 | 2014-07-03 | 91SS |  |  | COMITÊS; CREA; INSTRUTORES; SOCIEDADE | 1376h |
| 93 | 1.4.2.6 | **Atividades de Conclusão dos PMSB´s** |  | 53d | 2014-05-30 | 2014-08-14 |  | 0d |  |  | 3984h |
| 94 | 1.4.2.6.1 | Audiências públicas finais | manual | 43d | 2014-05-30 | 2014-07-31 | 92SS+20d |  |  | COMITÊS; CREA; FUNASA; INSTRUTORES; M. PÚBLICO; SOCIEDADE | 2064h |
| 95 | 1.4.2.6.2 | Adequação final dos planos completos com consultores (produtos: C a F) - 3ª versão | manual | 30d | 2014-06-18 | 2014-07-31 | 94SS+13d |  |  | COORD. TEC.; CREA; FUNASA | 720h |
| 96 | 1.4.2.6.3 | Validação final dos planos com as equipes dos municípios (produtos: C a F) - versão final | manual | 30d | 2014-07-04 | 2014-08-14 | 95SS+10d |  |  | COMITÊS; CREA; FUNASA; INSTRUTORES; SOCIEDADE | 1200h |
| 97 | 1.4.3 | **Atividades Finais** |  | 72d | 2014-05-16 | 2014-08-27 |  | 0d |  |  | 8456h |
| 98 | 1.4.3.1 | **6 ª Entrega: Produto G dos PMSB´s** |  | 63d | 2014-05-16 | 2014-08-14 |  | 0d |  |  | 3696h |
| 99 | 1.4.3.1.1 | Elaboração das minutas dos projetos de lei dos PMSB´s | manual | 63d | 2014-05-16 | 2014-08-14 | 92SS+10d |  |  | CONSULTORES; COORD. TEC.; CREA; FUNASA | 2016h |
| 100 | 1.4.3.1.2 | Apresentação dos planos finalizados e da minuta do projeto de lei para os prefeitos | manual | 30d | 2014-07-04 | 2014-08-14 | 99SS+33d |  |  | COMITÊS; CREA; FUNASA | 720h |
| 101 | 1.4.3.1.3 | Apresentação dos planos finalizados e da minuta do projeto de lei para as câmaras de vereadores | manual | 30d | 2014-07-04 | 2014-08-14 | 100SS |  |  | COMITÊS; CREA; FUNASA; SOCIEDADE | 960h |

| ID | WBS | Task | Type | Duration | Start | Finish | Predecessors | Total slack | Resources | Work |
| --- | --- | --- | --- | --- | --- | --- | --- | --- | --- | --- |
| 102 | 1.4.3.2 | **7ª Entrega: Produtos H e I dos PMSB´s** |  | 72d | 2014-05-16 | 2014-08-27 |  | 0d |  | 3264h |
| 103 | 1.4.3.2.1 | Elaboração dos planos de indicadores de desempenho dos PMSB's e sistema de informações | manual | 63d | 2014-05-16 | 2014-08-14 | 92SS+10d |  | CONSULTORES; COORD. TEC.; CREA; FUNASA | 2016h |
| 104 | 1.4.3.2.2 | Oficinas de capacitação das equipes dos municípios sobre os indicadores de desempenho | manual | 39d | 2014-07-04 | 2014-08-27 | 103SS+33d |  | COMITÊS; COORD. TEC.; CREA; FUNASA | 1248h |
| 105 | 1.4.3.3 | **8ª Entrega: Produto K dos PMSB´s** |  | 49d | 2014-06-04 | 2014-08-13 |  | 0d |  | 1496h |
| 106 | 1.4.3.3.1 | Elaboração do relatório final | manual | 49d | 2014-06-04 | 2014-08-13 | 104SS |  | COORD. ADM; COORD. TEC.; CREA | 1176h |
| 107 | 1.4.3.3.2 | Publicação dos resultados do projeto (Catálogo) | manual | 10d | 2014-07-31 | 2014-08-13 | 106SS+39d |  | CREA; FUNASA | 160h |
| 108 | 1.4.3.3.3 | Apresentação dos resultados do projeto (local a ser definido com a Funasa) | manual | 10d | 2014-07-31 | 2014-08-13 | 107SS |  | CREA; FUNASA | 160h |
| 109 | 1.5 | **MONITORAMENTO E CONTROLE** |  | 256d | 2013-08-22 | 2014-08-27 |  | 0d |  | 1896h |
| 110 | 1.5.1 | **Entrega Recorrente: Produto J dos PMSB`s** |  | 178d | 2013-08-22 | 2014-05-07 |  | 0d |  | 1272h |
| 111 | 1.5.1.1 | **Levantamento do andamento das atividades, consolidação das informações e emissão de relatórios preliminares mensais** |  | 178d | 2013-08-22 | 2014-05-07 |  | 0d |  | 1272h |
| 112 | 1.5.1.1.1 | Emissão do relatório do primeiro mês | manual | 5d | 2013-08-22 | 2013-08-28 | 2SS+15d |  | COORD. ADM; COORD. TEC.; CREA | 120h |
| 113 | 1.5.1.1.2 | Emissão do relatório do segundo mês | manual | 4d | 2013-09-25 | 2013-09-30 | 112SS+24d |  | COORD. ADM; COORD. TEC.; CREA | 96h |
| 114 | 1.5.1.1.3 | Emissão do relatório do terceiro mês | manual | 5d | 2013-10-21 | 2013-10-25 | 113SS+18d |  | COORD. ADM; COORD. TEC.; CREA | 120h |
| 115 | 1.5.1.1.4 | Emissão do relatório do quarto mês | manual | 5d | 2013-11-18 | 2013-11-22 | 114SS+19d |  | COORD. ADM; COORD. TEC.; CREA | 120h |
| 116 | 1.5.1.1.5 | Emissão do relatório do quinto mês | manual | 5d | 2013-12-23 | 2013-12-30 | 115SS+25d |  | COORD. ADM; COORD. TEC.; CREA | 120h |
| 117 | 1.5.1.1.6 | Emissão do relatório do sexto mês | manual | 5d | 2014-01-29 | 2014-02-04 | 116SS+25d |  | COORD. ADM; COORD. TEC.; CREA | 120h |
| 118 | 1.5.1.1.7 | Emissão do relatório do sétimo mês | manual | 5d | 2014-03-06 | 2014-03-12 | 117SS+25d |  | COORD. ADM; COORD. TEC.; CREA | 120h |
| 119 | 1.5.1.1.8 | Emissão do relatório do oitavo mês | manual | 5d | 2014-04-02 | 2014-04-08 | 118SS+19d |  | COORD. ADM; COORD. TEC.; CREA | 120h |
| 120 | 1.5.1.1.9 | Emissão do relatório do nono mês | manual | 4d | 2014-05-02 | 2014-05-07 | 119SS+19d |  | COORD. ADM; COORD. TEC.; CREA | 96h |
| 121 | 1.5.1.1.10 | Emissão do relatório do décimo mês | manual | 5d | 2014-01-27 | 2014-01-31 | 120SS+23d |  | COORD. ADM; COORD. TEC.; CREA | 120h |
| 122 | 1.5.1.1.11 | Emissão do relatório do décimo primeiro mês | manual | 5d | 2014-02-24 | 2014-02-28 | 121SS+20d |  | COORD. ADM; COORD. TEC.; CREA | 120h |
| 123 | 1.5.2 | **Realização de Reuniões de Avaliação** |  | 121d | 2014-03-05 | 2014-08-27 |  | 0d |  | 624h |
| 124 | 1.5.2.1 | Primeiro encontro de avaliação intermediária | manual | 10d | 2014-03-05 | 2014-03-18 | 82 |  | CREA; FUNASA | 160h |
| 125 | 1.5.2.2 | Segundo encontro de avaliação intermediária | manual | 10d | 2014-04-15 | 2014-04-30 | 87 |  | CREA; FUNASA | 160h |
| 126 | 1.5.2.3 | Terceiro encontro de avaliação intermediária | manual | 10d | 2014-06-04 | 2014-06-17 | 92 |  | CREA; FUNASA | 160h |
| 127 | 1.5.2.4 | Encontro para avaliação final |  | 9d | 2014-08-15 | 2014-08-27 | 104FF | 12d | CREA; FUNASA | 144h |

| ID | WBS | Task | Type | Duration | Start | Finish | Predecessors | Total slack | Resources | Work |
| --- | --- | --- | --- | --- | --- | --- | --- | --- | --- | --- |
| 128 | 1.6 | **ENCERRAMENTO** |  | 22d | 2014-08-14 | 2014-09-12 |  | 0d |  | 2144h |
| 129 | 1.6.1 | **Lições Aprendidas e Relatório Final de Gestão** |  | 22d | 2014-08-14 | 2014-09-12 |  | 0d |  | 832h |
| 130 | 1.6.1.1 | Realização de workshop de lições aprendidas do projeto | manual | 10d | 2014-08-14 | 2014-08-27 | 108 |  | CONSULTORES; COORD. ADM; COORD. TEC.; CREA; FUNASA; INSTRUTORES | 480h |
| 131 | 1.6.1.2 | Emissão do relatório final do projeto (gestão administrativa) | manual | 22d | 2014-08-14 | 2014-09-12 | 130SS |  | COORD. ADM; CREA | 352h |
| 132 | 1.6.2 | **Encerramento do Programa** |  | 22d | 2014-08-14 | 2014-09-12 |  | 0d |  | 1312h |
| 133 | 1.6.2.1 | Desmobilização dos recursos | manual | 22d | 2014-08-14 | 2014-09-12 | 130SS |  | COORD. ADM; COORD. TEC.; CREA | 528h |
| 134 | 1.6.2.2 | Fechamento da prestação de contas do programa | manual | 22d | 2014-08-14 | 2014-09-12 | 133SS |  | COORD. ADM; CREA | 352h |
| 135 | 1.6.2.3 | Encerramento administrativo dos contratos | manual | 22d | 2014-08-14 | 2014-09-12 | 133SS |  | COORD. ADM; CREA | 352h |
| 136 | 1.6.2.4 | Elaboração e registro do termo de recebimento do programa | manual | 5d | 2014-09-08 | 2014-09-12 | 133FF |  | COORD. ADM; CREA | 80h |
| 137 | 1.7 | Fim do programa | milestone | 0d | 2014-09-12 | 2014-09-12 | 132 | 0d |  |  |
